# P1-AriasMartinez-RuzNieto

Schedule from MS Project, 2022-04-25 to 2022-10-19, costs in €.

## Calendars

- Estándar: Mon-Fri 09:00-13:00, 15:00-19:00; Sat-Sun off. Exceptions (off unless hours are given): 2022-06-24 (San Juan).

## Resources

| Resource | Group | Rate |
| --- | --- | --- |
| César Pérez (Director Proyecto) | Director Proyecto | 75 |
| Ramón Nori (Jefe Funcional) | Jefe Funcional | 75 |
| Salvador López (Analista Funcional ) | Analista Funcional | 75 |
| Román Blanco (Jefe de Infrastructura) | Jefe de Infrastructura | 75 |
| Marcos Francés (Jefe de Desarrollo) | Jefe de Desarrollo | 75 |
| Desarrollador 1 (TBD) | (TBD) | 165 |
| Sandra Volta (ABD) | ABD | 75 |
| Kim Benson (Jefe de Pruebas) | Jefe de Pruebas | 75 |
| Tomás Gómez (Pruebas) | Pruebas | 75 |
| Desarrollador 2 (TBD) | (TBD) | 175 |
| Desarrollador 3 (TBD) | (TBD) | 175 |

## Schedule

| ID | WBS | Task | Duration | Start | Finish | Predecessors | Total slack | Free slack | Resources | Work | Cost |
| --- | --- | --- | --- | --- | --- | --- | --- | --- | --- | --- | --- |
| 1 | 1 | **Proyecto tienda web** | 127d | 2022-04-25 | 2022-10-19 |  | 0d |  |  | 8488.8h | 843,360 |
| 2 | 1.1 | **Dirección del proyecto** | 127d | 2022-04-25 | 2022-10-19 |  | 0d |  |  | 1016h | 76,200 |
| 3 | 1.1.1 | Dirigir proyecto | 127d | 2022-04-25 | 2022-10-19 | 59FF | 0d |  | César Pérez (Director Proyecto) | 1016h | 76,200 |
| 4 | 1.2 | **Requisitos del Sistema** | 13d | 2022-04-25 | 2022-05-11 |  | 8.25d |  |  | 280h | 21,000 |
| 5 | 1.2.1 | Identificar los requisitos del negocio | 4d | 2022-04-25 | 2022-04-28 |  | 8.25d | 0d | Ramón Nori (Jefe Funcional); Salvador López (Analista Funcional ) | 64h | 4,800 |
| 6 | 1.2.2 | Diseñar el flujo de procesos de negocio | 2d | 2022-04-29 | 2022-05-02 | 5 | 8.25d | 0d | Ramón Nori (Jefe Funcional); Salvador López (Analista Funcional ) | 32h | 2,400 |
| 7 | 1.2.3 | Finalizar los requisitos técnicos | 6d | 2022-04-25 | 2022-05-02 |  | 8.25d | 0d | Román Blanco (Jefe de Infrastructura) | 48h | 3,600 |
| 8 | 1.2.4 | Definir los requisitos operativos | 5d | 2022-05-03 | 2022-05-09 | 6, 7 | 8.25d | 0d | Ramón Nori (Jefe Funcional); Salvador López (Analista Funcional ); Román Blanco (Jefe de Infrastructura) | 120h | 9,000 |
| 9 | 1.2.5 | Determinar las necesidades de infraestructura técnica | 2d | 2022-05-10 | 2022-05-11 | 7, 8 | 13.8d | 0d | Román Blanco (Jefe de Infrastructura) | 16h | 1,200 |
| 10 | 1.3 | **Requisitos de Software** | 16d | 2022-05-10 | 2022-05-31 |  | 8.25d | 0d |  | 320h | 24,000 |
| 11 | 1.3.1 | **Crear requisitos Funcionales** | 16d | 2022-05-10 | 2022-05-31 | 5, 6, 8 | 8.25d | 0d |  | 208h | 15,600 |
| 12 | 1.3.1.1 | Captura del perfil del cliente | 4d | 2022-05-10 | 2022-05-13 |  | 13.25d | 2d | Ramón Nori (Jefe Funcional) | 32h | 2,400 |
| 13 | 1.3.1.2 | Vista y búsqueda del catálogo de productos | 6d | 2022-05-10 | 2022-05-17 |  | 8.25d | 0d | Ramón Nori (Jefe Funcional) | 48h | 3,600 |
| 14 | 1.3.1.3 | Carro de compra | 3d | 2022-05-18 | 2022-05-20 | 13 | 8.25d | 0d | Ramón Nori (Jefe Funcional) | 24h | 1,800 |
| 15 | 1.3.1.4 | Pago electrónico | 6d | 2022-05-10 | 2022-05-17 |  | 11.25d | 3d | Salvador López (Analista Funcional ) | 48h | 3,600 |
| 16 | 1.3.1.5 | Toma del pedido | 4d | 2022-05-23 | 2022-05-26 | 12, 13, 14, 15 | 8.25d | 0d | Ramón Nori (Jefe Funcional) | 32h | 2,400 |
| 17 | 1.3.1.6 | Comprobar historial del pedido | 3d | 2022-05-27 | 2022-05-31 | 16 | 8.25d |  | Ramón Nori (Jefe Funcional) | 24h | 1,800 |
| 18 | 1.3.2 | Requisitos de datos | 3d | 2022-05-18 | 2022-05-20 | 12, 13 | 15.25d |  | Salvador López (Analista Funcional ) | 24h | 1,800 |
| 19 | 1.3.3 | Requisitos de la interfaz del ERP | 7d | 2022-05-23 | 2022-05-31 | 16SS | 8.25d |  | Salvador López (Analista Funcional ) | 56h | 4,200 |
| 20 | 1.3.4 | Requisitos de la Interfaz de Usuario | 4d | 2022-05-10 | 2022-05-13 | 11SS | 20.25d |  | Salvador López (Analista Funcional ) | 32h | 2,400 |
| 21 | 1.4 | **Diseño detallado** | 19.75d | 2022-06-01 | 2022-06-29 | 10 | 8.25d | 0d |  | 776h | 72,420 |
| 22 | 1.4.1 | Diseño de la captura del perfil del cliente | 6.75d | 2022-06-01 | 2022-06-09 |  | 11.25d | 0d | Marcos Francés (Jefe de Desarrollo); Ramón Nori (Jefe Funcional) | 108h | 8,100 |
| 23 | 1.4.2 | Diseño de la vista y búsqueda del catálogo de productos | 6.75d | 2022-06-01 | 2022-06-09 |  | 8.25d | 0d | Desarrollador 1 (TBD); Ramón Nori (Jefe Funcional) | 108h | 12,960 |
| 24 | 1.4.3 | Diseño del carro de compra | 3d | 2022-06-09 | 2022-06-14 | 23 | 8.25d | 0d | Desarrollador 1 (TBD); Ramón Nori (Jefe Funcional) | 48h | 5,760 |
| 25 | 1.4.4 | Diseño del pago electrónico | 3d | 2022-06-01 | 2022-06-03 |  | 15d | 3d | Salvador López (Analista Funcional ); Marcos Francés (Jefe de Desarrollo) | 48h | 3,600 |
| 26 | 1.4.5 | Diseño de la toma del pedido | 8d | 2022-06-14 | 2022-06-27 | 22, 23, 24, 25 | 8.25d | 0d | Marcos Francés (Jefe de Desarrollo); Ramón Nori (Jefe Funcional) | 128h | 9,600 |
| 27 | 1.4.6 | Diseño de comprobación historial del pedido | 2d | 2022-06-27 | 2022-06-29 | 26 | 8.25d | 0d | Marcos Francés (Jefe de Desarrollo); Ramón Nori (Jefe Funcional) | 32h | 2,400 |
| 28 | 1.4.7 | Diseño lógico y físico del modelo de datos | 9d | 2022-06-01 | 2022-06-13 |  | 19d | 0d | Sandra Volta (ABD); Salvador López (Analista Funcional ) | 144h | 10,800 |
| 29 | 1.4.8 | Diseño de la interfaz del ERP | 10d | 2022-06-14 | 2022-06-29 | 22, 23, 24, 25 | 8.25d | 0d | Desarrollador 1 (TBD); Salvador López (Analista Funcional ) | 160h | 19,200 |

| ID | WBS | Task | Type | Duration | Start | Finish | Predecessors | Total slack | Free slack | Resources | Work | Cost |
| --- | --- | --- | --- | --- | --- | --- | --- | --- | --- | --- | --- | --- |
| 30 | 1.5 | **Plan de pruebas** |  | 40.75d | 2022-06-01 | 2022-07-28 |  | 8.25d |  |  | 448h | 33,600 |
| 31 | 1.5.1 | Establecer los requisitos de las pruebas |  | 7d | 2022-06-01 | 2022-06-09 | 11 | 21d | 0d | Kim Benson (Jefe de Pruebas); Tomás Gómez (Pruebas) | 112h | 8,400 |
| 32 | 1.5.2 | Crear el plan y los casos de prueba |  | 10d | 2022-06-29 | 2022-07-13 | 21, 31 | 8.25d | 0d | Kim Benson (Jefe de Pruebas); Tomás Gómez (Pruebas) | 160h | 12,000 |
| 33 | 1.5.3 | Escribir los códigos de pruebas |  | 11d | 2022-07-13 | 2022-07-28 | 32 | 8.25d | 0d | Kim Benson (Jefe de Pruebas); Tomás Gómez (Pruebas) | 176h | 13,200 |
| 34 | 1.6 | **Infraestructura técnica** |  | 113.2d | 2022-04-25 | 2022-09-30 |  | 13.8d |  |  | 868.8h | 65,160 |
| 35 | 1.6.1 | Crear el entorno de desarrollo |  | 20d | 2022-05-12 | 2022-06-08 | 9 | 13.8d | 0d | Román Blanco (Jefe de Infrastructura) | 160h | 12,000 |
| 36 | 1.6.2 | Crear el entorno de pruebas |  | 34.2d | 2022-06-09 | 2022-07-28 | 35 | 13.8d | 0d | Román Blanco (Jefe de Infrastructura) | 273.6h | 20,520 |
| 37 | 1.6.3 | Soporte del entorno de desarrollo |  | 3.8d | 2022-06-09 | 2022-06-14 | 35 | 90.2d |  | Román Blanco (Jefe de Infrastructura) | 30.4h | 2,280 |
| 38 | 1.6.4 | Soporte del entorno de desarrollo y pruebas |  | 46d | 2022-07-28 | 2022-09-30 | 36 | 13.8d |  | Román Blanco (Jefe de Infrastructura) | 368h | 27,600 |
| 39 | 1.6.5 | Soporte de bases de datos |  | 4.6d | 2022-04-25 | 2022-04-29 |  | 122.4d |  | Sandra Volta (ABD) | 36.8h | 2,760 |
| 40 | 1.7 | **Desarrollo y prueba de componentes** |  | 36.75d | 2022-06-09 | 2022-08-01 | 35 | 37d |  |  | 1180h | 151,060 |
| 41 | 1.7.1 | Construir la captura del perfil del cliente |  | 13d | 2022-06-09 | 2022-06-29 | 22 | 42.25d | 6d | Desarrollador 2 (TBD) | 104h | 18,200 |
| 42 | 1.7.2 | Construir la vista y búsqueda del catálogo de productos |  | 12d | 2022-06-09 | 2022-06-28 | 23 | 36.25d | 0d | Desarrollador 3 (TBD) | 96h | 16,800 |
| 43 | 1.7.3 | Construir el carro de compra |  | 7d | 2022-06-28 | 2022-07-07 | 24, 42 | 36.25d | 0d | Desarrollador 3 (TBD) | 56h | 9,800 |
| 44 | 1.7.4 | Construir el pago electrónico |  | 6d | 2022-06-09 | 2022-06-16 | 25 | 50d | 13.75d | Desarrollador 2 (TBD) | 48h | 8,400 |
| 45 | 1.7.5 | Construir la toma del pedido |  | 12d | 2022-07-07 | 2022-07-25 | 26, 41, 42, 43, 44 | 36.25d | 0d | Desarrollador 2 (TBD); Desarrollador 3 (TBD) | 192h | 33,600 |
| 46 | 1.7.6 | Construir la comprobación historial del pedido |  | 6d | 2022-06-29 | 2022-07-07 | 27 | 48.25d | 12d | Marcos Francés (Jefe de Desarrollo) | 48h | 3,600 |
| 47 | 1.7.7 | Construir el modelo de datos lógico y físico |  | 15.5d | 2022-06-14 | 2022-07-06 | 28 | 49.5d | 13.25d | Sandra Volta (ABD) | 124h | 9,300 |
| 48 | 1.7.8 | Construir la interfaz del ERP |  | 18d | 2022-06-29 | 2022-07-25 | 29 | 36.25d | 0d | Desarrollador 1 (TBD) | 144h | 23,760 |
| 49 | 1.7.9 | Soporte de desarrollo y de las pruebas |  | 23d | 2022-06-29 | 2022-08-01 | 21 | 57.25d |  | Ramón Nori (Jefe Funcional); Salvador López (Analista Funcional ) | 368h | 27,600 |
| 50 | 1.8 | **Pruebas** |  | 63.75d | 2022-06-09 | 2022-09-08 |  | 8.25d | 0d |  | 2176h | 244,400 |
| 51 | 1.8.1 | Ejecutar pruebas de montaje | milestone | 0d | 2022-06-09 | 2022-06-09 | 31 | 42d | 33.75d |  |  |  |
| 52 | 1.8.2 | Ejecutar pruebas de fase 1 |  | 12d | 2022-07-07 | 2022-07-25 | 41, 42, 43 | 36.25d | 0d | Marcos Francés (Jefe de Desarrollo) | 96h | 7,200 |
| 53 | 1.8.3 | Ejecutar pruebas de fase 2 |  | 5d | 2022-07-25 | 2022-08-01 | 44, 45, 46, 47, 48, 52 | 36.25d |  | Marcos Francés (Jefe de Desarrollo); Desarrollador 1 (TBD); Desarrollador 2 (TBD); Desarrollador 3 (TBD) | 160h | 23,600 |
| 54 | 1.8.4 | Ejecutar pruebas del sistema |  | 20d | 2022-07-28 | 2022-08-25 | 32, 33, 51 | 8.25d | 0d | Kim Benson (Jefe de Pruebas); Tomás Gómez (Pruebas); Desarrollador 1 (TBD); Desarrollador 2 (TBD); Desarrollador 3 (TBD); Marcos Francés (Jefe de Desarrollo); Ramón Nori (Jefe Funcional); Salvador López (Analista Funcional ) | 1280h | 142,400 |
| 55 | 1.8.5 | Validar las pruebas |  | 10d | 2022-08-25 | 2022-09-08 | 54 | 8.25d |  | Kim Benson (Jefe de Pruebas); Tomás Gómez (Pruebas); Desarrollador 1 (TBD); Desarrollador 2 (TBD); Desarrollador 3 (TBD); Marcos Francés (Jefe de Desarrollo); Ramón Nori (Jefe Funcional); Salvador López (Analista Funcional ) | 640h | 71,200 |

| ID | WBS | Task | Duration | Start | Finish | Predecessors | Total slack | Free slack | Resources | Work | Cost |
| --- | --- | --- | --- | --- | --- | --- | --- | --- | --- | --- | --- |
| 56 | 1.9 | **Despliegue** | 21d | 2022-09-08 | 2022-10-07 | 50 | 8.25d |  |  | 1424h | 155,520 |
| 57 | 1.9.1 | Implantación | 10d | 2022-09-08 | 2022-09-22 |  | 8.25d | 0d | Kim Benson (Jefe de Pruebas); Tomás Gómez (Pruebas); Desarrollador 1 (TBD); Desarrollador 2 (TBD); Desarrollador 3 (TBD); Marcos Francés (Jefe de Desarrollo); Ramón Nori (Jefe Funcional); Salvador López (Analista Funcional ) | 640h | 71,200 |
| 58 | 1.9.2 | Despliegue a producción | 1d | 2022-09-22 | 2022-09-23 | 57 | 8.25d | 0d | Kim Benson (Jefe de Pruebas); Tomás Gómez (Pruebas); Desarrollador 1 (TBD); Desarrollador 2 (TBD); Desarrollador 3 (TBD); Marcos Francés (Jefe de Desarrollo); Ramón Nori (Jefe Funcional); Salvador López (Analista Funcional ) | 64h | 7,120 |
| 59 | 1.9.3 | Revisión del proyecto | 10d | 2022-09-23 | 2022-10-07 | 58 | 8.25d |  | Kim Benson (Jefe de Pruebas); Tomás Gómez (Pruebas); Marcos Francés (Jefe de Desarrollo); Desarrollador 1 (TBD); Desarrollador 2 (TBD); Desarrollador 3 (TBD); Ramón Nori (Jefe Funcional); Salvador López (Analista Funcional ); Román Blanco (Jefe de Infrastructura) | 720h | 77,200 |
